# RAH Chiller #4 Rebuild Project 2025.11.21

Schedule from Primavera P6, 2023-10-20 to 2026-02-17, data date 2025-11-21, A marks actual dates.

## Calendars

- COCH-5D/w/ Holidays: Mon-Fri 08:00-12:00, 13:00-17:00; Sat-Sun off. Exceptions (off unless hours are given): 2023-12-25 to 2023-12-26, 2024-01-01, 2024-02-19, 2024-03-29, 2024-05-20, 2024-07-01, 2024-08-05, 2024-09-02, 2024-10-14, 2024-12-25 to 2024-12-26, 2025-01-01, 2025-02-17, 2025-04-18, 2025-05-19, 2025-07-01, 2025-08-04, 2025-09-08, 2025-10-13, 2025-12-24 to 2025-12-26, 2026-01-01 to 2026-01-02, 2026-02-16.

## Schedule

| ID | WBS | Activity | Type | Duration | Start | Finish | Predecessors | Complete | Planned start | Planned finish | Total float | Free float | Constraint | #User-Text_13 |
| --- | --- | --- | --- | --- | --- | --- | --- | --- | --- | --- | --- | --- | --- | --- |
|  | 3 | **Project Summary & Milestones** |  |  | 2023-10-20 | 2026-02-17 |  |  |  |  |  |  |  |  |
| MILE-100 |  | Contract Commencement date | milestone | 0d | 2023-10-20 A | 2023-10-20 A |  | 100% |  |  |  |  |  | PSM-100 |
| MILE-110 |  | IFC Drawing Issue | milestone | 0d | 2023-10-25 A | 2023-10-25 A |  | 100% |  |  |  |  |  | PSM-110 |
| MILE-150 |  | Electrical Permit |  | 18d | 2024-01-15 A | 2024-02-02 A | MILE-110 SS | 100% | 2024-01-15 | 2024-02-07 |  |  |  | PSM-150 |
| MILE-120 |  | Mobilization | milestone | 0d | 2024-02-15 A | 2024-02-15 A | C-MOB-100 SS | 100% | 2024-02-07 | 2024-02-07 |  |  |  | PSM-120 |
| MILE-130 |  | Substiantial Performance of Work | milestone | 0d | 2026-01-12 | 2026-01-12 | PCO-130 FF |  |  |  | -23d | 0d | finish on or before 2025-12-03 | PSM-130 |
| MILE-140 |  | Total Completion | milestone | 0d | 2026-02-17 | 2026-02-17 | PCS-150 FF |  |  |  | -26d | 0d | finish on or before 2026-01-09 | PSM-140 |
|  | 1 | **Preconstruction** |  |  | 2023-11-29 | 2025-05-28 |  |  |  |  |  |  |  |  |
|  | 5 | **Shop Drawings/Submittals and Procurement** |  |  | 2023-11-29 | 2025-05-28 |  |  |  |  |  |  |  |  |
|  | 4 | **Compressor Equipment** |  |  | 2023-11-29 | 2024-11-04 |  |  |  |  |  |  |  |  |
| P-SB-C-10 |  | Compressor Subcontract Award | resource dependent | 5d | 2023-11-29 A | 2024-01-03 A | MILE-100, MILE-110 FS+26d | 100% | 2023-11-29 | 2023-12-05 |  |  |  | PRO-260 |
| P-PRO-C-20 |  | Compressor Parts Delivery | resource dependent | 55d | 2024-01-04 A | 2024-11-04 A | P-SB-C-10 | 100% | 2024-01-04 | 2024-03-21 |  |  |  | PRO-290 |
| P-PRO-CH-10 |  | Chiller control and Purge system Delivery on Site | milestone | 0d | 2024-11-04 A | 2024-11-04 A | P-PRO-C-20 FF | 100% |  |  |  |  |  | PRO-300 |
|  | 8 | **Concrete** |  |  |  |  |  |  |  |  |  |  |  |  |
|  | 6 | **Electrical** |  |  | 2024-01-15 | 2024-02-22 |  |  |  |  |  |  |  |  |
| P-SB-E-10 |  | Electrical Subcontract Award | resource dependent | 5d | 2024-01-15 A | 2024-01-31 A | MILE-100, MILE-110 FS+29d | 100% | 2024-01-15 | 2024-01-19 |  |  | start on or after 2024-01-15 | PRO-180 |
| P-SD-E-20 |  | Electical Shop Drawings Issue | resource dependent | 5d | 2024-02-01 A | 2024-02-07 A | P-SB-E-10 | 100% | 2024-01-22 | 2024-01-26 |  |  |  | PRO-190 |
| P-SD-E-30 |  | Electical Shop Drawing Review & Approval | resource dependent | 5d | 2024-02-08 A | 2024-02-14 A | P-SD-E-20 | 100% |  |  |  |  |  | PRO-200 |
| P-PRO-E-10 |  | Electical Delivery | resource dependent | 5d | 2024-02-15 A | 2024-02-22 A | P-SD-E-30 | 100% |  |  |  |  |  | PRO-210 |
|  | 3 | **Waterproofing** |  |  | 2025-05-28 | 2025-05-28 |  |  |  |  |  |  |  |  |
| P-SD-WP-10 |  | Waterproofing Shop Drawings Issue | resource dependent | 5d | 2025-05-28 A | 2025-05-28 A | MILE-100 SS, MILE-110 SS | 100% | 2024-01-22 | 2024-01-26 |  |  |  | PRO-320 |
|  | 5 | **Integrated Phased Planning** |  |  | 2024-02-15 | 2026-01-12 |  |  |  |  |  |  |  |  |
|  | 4 | **QA/QC Hold Points** |  |  | 2025-12-31 | 2026-01-12 |  |  |  |  |  |  |  |  |
| IPP-QAQC-10 |  | Mechanical Inspection |  | 1d | 2025-12-31 | 2025-12-31 | C-PH3-RI-10, IPP-SAFE-30 |  |  |  | -17d | 6d |  | QAQC-110 |
| IPP-QAQC-20 |  | Electrical Inspection |  | 1d | 2026-01-06 | 2026-01-06 | C-PH3-RI-20 |  |  |  | -26d | 0d |  | QAQC-100 |
| IPP-QAQC-30 |  | FM&E Inspection |  | 1d | 2026-01-12 | 2026-01-12 | CX-100 |  |  |  | -23d | 0d |  | QAQC-120 |

| ID | WBS | Activity | Type | Duration | Start | Finish | Predecessors | Complete | Planned start | Planned finish | Total float | Free float | Expected finish | #User-Text_13 |
| --- | --- | --- | --- | --- | --- | --- | --- | --- | --- | --- | --- | --- | --- | --- |
|  | 2 | **Safety Hold Points** |  |  | 2024-02-15 | 2025-12-12 |  |  |  |  |  |  |  |  |
| IPP-SAFE-10 |  | Hold Point: Safety Start Up |  | 1d | 2024-02-15 A | 2024-02-15 A | MILE-100 SS | 100% | 2024-02-28 | 2024-02-28 |  |  |  | SHP-100 |
| IPP-SAFE-20 |  | Safety Hold Point: Hoisting and Rigging Removal | milestone | 0d | 2025-11-17 A | 2025-11-17 A | C-PH1-RM-20 SS | 100% | 2025-11-10 | 2025-11-10 |  |  |  | SAFE-100 |
| IPP-SAFE-30 |  | Safety Hold Point: Hoisting and Rigging Install | milestone | 0d | 2025-12-12 | 2025-12-12 | C-PH2-RB-30 |  |  |  | -26d | 0d |  | SAFE-110 |
|  | 6 | **Change Management** |  |  | 2025-04-07 | 2025-08-26 |  |  |  |  |  |  |  |  |
|  | 1 | **RFI#03 Tunnel Location** |  |  | 2025-04-07 | 2025-07-18 |  |  |  |  |  |  |  |  |
| X-RFI-03-10 |  | RFI#003 Issued |  | 1d | 2025-04-07 A | 2025-04-07 A |  | 100% | 2025-04-17 | 2025-04-17 |  |  |  | X-RFI-003-100 |
| X-RFI-03-20 |  | RFI#003 Review and Response |  | 5d | 2025-04-08 A | 2025-04-23 A | X-RFI-03-10 | 100% | 2025-04-17 | 2025-04-24 |  |  |  | X-RFI-003-110 |
| X-RFI-03-30 |  | RFI#003 Site Plan Drawing by Consultant |  | 5d | 2025-04-24 A | 2025-07-18 A | X-RFI-03-20 | 100% | 2025-04-17 | 2025-04-24 |  |  |  | X-RFI-003-120 |
|  | 2 | **CO#02 Alternate Execution Strategy - Basement** |  |  | 2025-08-18 | 2025-08-26 |  |  |  |  |  |  |  |  |
| X-CO-02-10 |  | CO#02 Review and Approval for Pricing |  | 5d | 2025-08-18 A | 2025-08-25 A |  | 100% | 2025-07-14 | 2025-07-18 |  |  |  | X-CO-002-110 |
| X-CO-02-20 |  | CO#02 Issued |  | 5d | 2025-08-26 A | 2025-08-26 A | X-CO-02-10 | 100% | 2025-07-14 | 2025-07-18 |  |  |  | X-CO-002-100 |
|  | 8 | **Construction/Repair** |  |  | 2024-02-15 | 2026-01-06 |  |  |  |  |  |  |  |  |
|  | 9 | **Construction** |  |  | 2024-02-15 | 2026-01-06 |  |  |  |  |  |  |  |  |
|  | 5 | **Mobilization** |  |  | 2024-02-15 | 2025-10-24 |  |  |  |  |  |  |  |  |
| C-MOB-100 |  | Site Mobilization |  | 1d | 2024-02-15 A | 2024-02-15 A | MILE-100 FS+10d, MILE-110 FS+10d | 100% | 2024-02-27 | 2024-02-27 |  |  |  | MOB-100 |
| C-MOB-130 |  | Infection Prevention Control Document (AHS) |  | 5d | 2024-02-16 A | 2024-03-15 A | IPP-SAFE-10 | 100% | 2024-02-07 | 2024-02-13 |  |  |  | MOB-130 |
| C-MOB-110 |  | Pre Work Hazard Assessment, Safety Start Up |  | 1d | 2024-02-29 A | 2024-02-29 A | C-MOB-100 | 100% | 2024-02-28 | 2024-02-28 |  |  |  | MOB-110 |
| C-MOB-140 |  | AHS Suspention order of the work |  | 103d | 2024-03-21 A | 2025-04-01 A |  | 100% | 2024-03-21 | 2024-08-16 |  |  |  | MOB-140 |
| C-MOB-150 |  | Pre Work Planning (RFI, Procurement and Site Investigation) |  | 5d | 2025-04-02 A | 2025-10-03 A | C-MOB-140, X-CO-02-20 | 100% | 2024-10-17 | 2024-10-23 |  |  |  | MOB-150 |
| C-MOB-160 |  | Mobilization (Sticky Mats and Safety Board) |  | 5d | 2025-10-06 A | 2025-10-10 A | C-MOB-150, X-CO-02-20 | 100% |  |  |  |  |  | MOB-160 |
| C-MOB-170 |  | Construction Delayed by Weather Conditions |  | 5d | 2025-10-13 A | 2025-10-24 A |  | 100% | 2025-10-09 | 2025-10-16 |  |  |  |  |
|  | 1 | **Removal Phase #1** |  |  | 2025-10-27 | 2025-11-28 |  |  |  |  |  |  |  |  |
| C-PH1-RM-10 |  | Equipment Disconnecting (Electrical and Trane) |  | 5d | 2025-10-27 A | 2025-11-04 A | C-MOB-110, IPP-SAFE-10, C-MOB-150, C-MOB-160, C-MOB-170 | 100% | 2025-10-27 | 2025-10-31 |  |  |  | CON-PH1-110 |
| C-PH1-RM-20 |  | ICON - Mechanical Demo |  | 9d | 2025-11-06 A | 2025-11-06 A | C-PH1-RM-10 | 100% | 2025-10-31 | 2025-11-12 |  |  |  | CON-PH1-120 |
| C-PH1-RM-30 |  | ICON - Mechanical Hoisting |  | 5d | 2025-11-24 | 2025-11-28 | C-PH1-RM-20, IPP-SAFE-20 |  |  |  | -26d | 0d | 2025-11-28 |  |

Notes:
- C-MOB-140: Delays: OAC Meeting on day 21st of Mar 2024 AHS mention postpond project to fall time / due to Trane comments on lead time of chiller parts and risks

| ID | WBS | Activity | Type | Duration | Start | Finish | Predecessors | Total float | Free float | #User-Text_13 |
| --- | --- | --- | --- | --- | --- | --- | --- | --- | --- | --- |
|  | 2 | **Rebuild Phase #2** |  |  | 2025-12-01 | 2025-12-12 |  |  |  |  |
| C-PH2-RB-10 |  | Electrical Rough-ins |  | 3d | 2025-12-01 | 2025-12-03 | C-PH1-RM-20, C-PH1-RM-30 | -19d | 7d | CON-PH3-140 |
| C-PH2-RB-30 |  | Compressor Rebuild |  | 10d | 2025-12-01 | 2025-12-12 | C-PH2-RB-10 FF, C-PH1-RM-30 | -26d | 0d | CON-PH1-130 |
|  | 3 | **Re-Install Phase #3** |  |  | 2025-12-15 | 2026-01-06 |  |  |  |  |
| C-PH3-RI-30 |  | ICON - Mechanical Hoisting |  | 7d | 2025-12-15 | 2025-12-23 | IPP-SAFE-30 | -26d | 0d |  |
| C-PH3-RI-10 |  | ICON - Mechanical Reinstallation |  | 2d | 2025-12-29 | 2025-12-30 | P-PRO-CH-10 FS+1d, C-PH2-RB-30, IPP-SAFE-30, C-PH3-RI-30 | -26d | 0d | CON-PH3-160 |
| C-PH3-RB-20 |  | Insulation (ARMICELL) for Chiller |  | 3d | 2025-12-31 | 2026-01-06 | C-PH3-RI-10 | -26d | 0d | CON-PH3-220 |
| C-PH3-RI-20 |  | Final Electrical |  | 2d | 2025-12-31 | 2026-01-05 | C-PH3-RI-10 | -26d | 0d | CON-PH3-210 |
|  | 2 | **Commissioning and Startup** |  |  | 2026-01-07 | 2026-01-09 |  |  |  |  |
| CX-100 |  | Start up and Commissioning |  | 3d | 2026-01-07 | 2026-01-09 | IPP-QAQC-20, C-PH3-RB-20 | -26d | 0d | HOV-100 |
|  | 15 | **Handover and Substantial Performance** |  |  | 2026-01-06 | 2026-02-17 |  |  |  |  |
| PCO-110 |  | Final Clean |  | 1d | 2026-01-06 | 2026-01-06 | C-PH3-RI-20 | -19d | 4d | HOV-110 |
| PCO-120 |  | O&M Manual Submission, Review and Approval |  | 10d | 2026-01-12 | 2026-01-23 | CX-100 | -26d | 0d | HOV-120 |
| PCO-140 |  | Site Demonstration and Training for RAH FM&E |  | 1d | 2026-01-12 | 2026-01-12 | CX-100 | -23d | 0d |  |
| PCO-130 |  | Substantial Performance of Work | milestone | 0d | 2026-01-12 | 2026-01-12 | CX-100 FF, IPP-QAQC-30 FF, IPP-QAQC-10 FF, PCO-140 FF, PCO-110 FF | -23d | 0d | HOV-130 |
| PCO-160 |  | O&M Binders Printing |  | 11d | 2026-01-26 | 2026-02-09 | PCO-120 | -26d | 0d | HOV-160 |
| PCO-170 |  | O&M Binders Delivery |  | 5d | 2026-02-10 | 2026-02-17 | PCO-160 | -26d | 0d | HOV-170 |
|  | 16 | **Close Out and Final Completion** |  |  | 2026-01-13 | 2026-02-17 |  |  |  |  |
| PCS-140 |  | Final Defficiencies Closeout |  | 20d | 2026-01-13 | 2026-02-09 | PCO-130, MILE-130 | -21d | 5d | HOV-140 |
| PCS-150 |  | Total Completion | milestone | 0d | 2026-02-17 | 2026-02-17 | PCS-140 FF, PCO-120 FF, PCO-160 FF, PCO-170 FF | -26d | 0d | HOV-150 |

Notes:
- PCO-130: Expenses: Substantial Performance - (cost) 0
- PCS-140: Expenses: Final Inspection - (cost) 0
- PCS-150: Expenses: Total Completion - (cost) 0
